# Xbox Default Title - Test Schedule

Schedule from MS Project, 2001-05-14 to 2001-07-31.
Microsoft

## Calendars

- Standard: Mon-Fri 08:00-12:00, 13:00-17:00; Sat-Sun off.

## Resources

| Resource |
| --- |
| Tyler Carper |
| David Brender |
| Ken Inafuku |
| Jim Helm |

## Schedule

| ID | Task | Type | Duration | Start | Finish | Predecessors | Baseline start | Baseline finish | Baseline duration | Total slack | Free slack | Constraint | Resources | Work |
| --- | --- | --- | --- | --- | --- | --- | --- | --- | --- | --- | --- | --- | --- | --- |
| 1 | Test Plan / Case Updates |  | 3d | 2001-05-14 | 2001-05-16 |  | 2001-05-14 | 2001-05-16 | 3d | 1d | 0d | finish no earlier than 2001-05-16 | Tyler Carper | 24h |
| 2 | Test Plan / Case Updates |  | 3d | 2001-05-14 | 2001-05-16 |  | 2001-05-14 | 2001-05-16 | 3d | 1d | 0d | finish no earlier than 2001-05-16 | David Brender | 24h |
| 3 | Test Plan / Case Updates |  | 3d | 2001-05-14 | 2001-05-16 |  | 2001-05-14 | 2001-05-16 | 3d | 1d | 0d | finish no earlier than 2001-05-16 | Ken Inafuku | 24h |
| 4 | Obtain / Order CD & DVD Media |  | 3d | 2001-05-14 | 2001-05-16 |  | 2001-05-14 | 2001-05-16 | 3d | 49d | 0d |  | Jim Helm | 24h |
| 5 | Test Pass #1 |  | 5d | 2001-05-17 | 2001-05-23 | 1 | 2001-05-17 | 2001-05-23 | 5d | 1d | 0d | start no earlier than 2001-05-17 | Tyler Carper | 40h |
| 6 | Test Pass #1 |  | 5d | 2001-05-17 | 2001-05-23 | 2 | 2001-05-17 | 2001-05-23 | 5d | 1d | 0d | start no earlier than 2001-05-17 | David Brender | 40h |
| 7 | Test Pass #1 |  | 5d | 2001-05-17 | 2001-05-23 | 3 | 2001-05-17 | 2001-05-23 | 5d | 1d | 0d | start no earlier than 2001-05-17 | Ken Inafuku | 40h |
| 8 | Get LOC files for all Languages |  | 5d | 2001-05-17 | 2001-05-23 |  | 2001-05-17 | 2001-05-23 | 5d | 49d |  | start no earlier than 2001-05-17 | Jim Helm | 40h |
| 9 | Create Boot / Error Test Plan |  | 2d | 2001-05-17 | 2001-05-20 | 4 | 2001-05-17 | 2001-05-20 | 2d | 49d | 0d | finish no earlier than 2001-05-20 | Jim Helm | 16h |
| 10 | Add Boot / Error Test Cases to TACTICS |  | 3d | 2001-05-21 | 2001-05-23 | 9 | 2001-05-21 | 2001-05-23 | 3d | 49d |  |  | Jim Helm | 24h |
| 11 | Update Config Tool for all Configuration Options |  | 5d | 2001-05-21 | 2001-05-25 |  | 2001-05-21 | 2001-05-25 | 5d | 47d |  | start no earlier than 2001-05-21 | Jim Helm | 40h |
| 12 | Resolve Bugs / Update Tests |  | 2d | 2001-05-24 | 2001-05-25 | 5 | 2001-05-24 | 2001-05-25 | 2d | 1d |  |  | Tyler Carper | 16h |
| 13 | Resolve Bugs / Update Tests |  | 2d | 2001-05-24 | 2001-05-25 | 6 | 2001-05-24 | 2001-05-25 | 2d | 1d | 0d |  | David Brender | 16h |
| 14 | Resolve Bugs / Update Tests |  | 2d | 2001-05-24 | 2001-05-25 | 7 | 2001-05-24 | 2001-05-25 | 2d | 1d | 0d |  | Ken Inafuku | 16h |
| 15 | Test Pass #2 |  | 5d | 2001-05-29 | 2001-06-04 | 12 | 2001-05-28 | 2001-06-01 | 5d | 0d |  | start no earlier than 2001-05-29 | Tyler Carper | 40h |
| 16 | Test Pass #2 |  | 5d | 2001-05-29 | 2001-06-04 | 13 | 2001-05-28 | 2001-06-01 | 5d | 0d |  | start no earlier than 2001-05-29 | David Brender | 40h |
| 17 | Test Pass #2 |  | 5d | 2001-05-29 | 2001-06-04 | 14 | 2001-05-28 | 2001-06-01 | 5d | 0d |  | start no earlier than 2001-05-29 | Ken Inafuku | 40h |
| 18 | Create Entry Point Test Plan |  | 2d | 2001-05-29 | 2001-05-30 |  | 2001-05-28 | 2001-05-29 | 2d | 42d | 0d | start no earlier than 2001-05-29 | Jim Helm | 16h |
| 19 | Add Entry Point Test Cases to TACTICS |  | 3d | 2001-05-31 | 2001-06-04 | 18 | 2001-05-30 | 2001-06-01 | 3d | 42d |  | start no earlier than 2001-05-30 | Jim Helm | 24h |
| 20 | Resolve Bugs / Update Tests |  | 2d | 2001-06-05 | 2001-06-06 | 15 | 2001-06-04 | 2001-06-05 | 2d | 0d |  | start no earlier than 2001-06-04 | Tyler Carper | 16h |
| 21 | Resolve Bugs / Update Tests |  | 2d | 2001-06-05 | 2001-06-06 | 16 | 2001-06-04 | 2001-06-05 | 2d | 0d |  | start no earlier than 2001-06-04 | David Brender | 16h |
| 22 | Resolve Bugs / Update Tests |  | 2d | 2001-06-05 | 2001-06-06 | 17 | 2001-06-04 | 2001-06-05 | 2d | 0d |  | start no earlier than 2001-06-04 | Ken Inafuku | 16h |
| 23 | Create LOC Screen Shots for Each Lang |  | 2d | 2001-06-04 | 2001-06-05 |  | 2001-06-04 | 2001-06-05 | 2d | 40d |  | start no earlier than 2001-06-04 | Jim Helm | 16h |
| 24 | Test Pass #3 |  | 5d | 2001-06-07 | 2001-06-13 | 20 | 2001-06-06 | 2001-06-12 | 5d | 0d |  | start no earlier than 2001-06-06 | Tyler Carper | 40h |
| 25 | Test Pass #3 |  | 5d | 2001-06-07 | 2001-06-13 | 21 | 2001-06-06 | 2001-06-12 | 5d | 0d |  | start no earlier than 2001-06-06 | David Brender | 40h |
| 26 | Test Pass #3 |  | 5d | 2001-06-07 | 2001-06-13 | 22 | 2001-06-06 | 2001-06-12 | 5d | 0d |  | start no earlier than 2001-06-06 | Ken Inafuku | 40h |
| 27 | Memory Leak Testing - Scripts and Scenarios |  | 5d | 2001-06-06 | 2001-06-12 |  | 2001-06-06 | 2001-06-12 | 5d | 35d |  | start no earlier than 2001-06-06 | Jim Helm | 40h |
| 28 | Resolve Bugs / Update Tests |  | 2d | 2001-06-14 | 2001-06-15 | 24 | 2001-06-13 | 2001-06-14 | 2d | 0d |  | start no earlier than 2001-06-13 | Tyler Carper | 16h |
| 29 | Resolve Bugs / Update Tests |  | 2d | 2001-06-14 | 2001-06-15 | 25 | 2001-06-13 | 2001-06-14 | 2d | 0d |  | start no earlier than 2001-06-13 | David Brender | 16h |
| 30 | Resolve Bugs / Update Tests |  | 2d | 2001-06-14 | 2001-06-15 | 26 | 2001-06-13 | 2001-06-14 | 2d | 0d |  | start no earlier than 2001-06-13 | Ken Inafuku | 16h |
| 31 | CODE COMPLETE | milestone | 1d | 2001-06-15 | 2001-06-15 |  | 2001-06-15 | 2001-06-15 | 1d | 32d |  | start no earlier than 2001-06-15 |  |  |
| 32 | Test Pass #4 |  | 5d | 2001-06-18 | 2001-06-22 | 29 | 2001-06-15 | 2001-06-21 | 5d | 0d |  | start no earlier than 2001-06-15 | Tyler Carper | 40h |
| 33 | Test Pass #4 |  | 5d | 2001-06-18 | 2001-06-22 | 30 | 2001-06-15 | 2001-06-21 | 5d | 0d |  | start no earlier than 2001-06-15 | David Brender | 40h |
| 34 | Test Pass #4 |  | 5d | 2001-06-18 | 2001-06-22 | 28 | 2001-06-15 | 2001-06-21 | 5d | 0d |  | start no earlier than 2001-06-15 | Ken Inafuku | 40h |
| 35 | Create Xdash screen list / TV Mode tests |  | 3d | 2001-06-15 | 2001-06-19 |  | 2001-06-15 | 2001-06-19 | 3d | 0d |  | start no earlier than 2001-06-15 | Jim Helm | 24h |
| 36 | Test Pass #4 |  | 3d | 2001-06-20 | 2001-06-22 | 35 | 2001-06-20 | 2001-06-21 | 2d | 0d |  | start no earlier than 2001-06-20 | Jim Helm | 24h |
| 37 | Resolve Bugs / Update Tests |  | 2d | 2001-06-25 | 2001-06-26 | 34 | 2001-06-22 | 2001-06-25 | 2d | 0d |  | start no earlier than 2001-06-22 | Tyler Carper | 16h |
| 38 | Resolve Bugs / Update Tests |  | 2d | 2001-06-25 | 2001-06-26 | 32 | 2001-06-22 | 2001-06-25 | 2d | 0d |  | start no earlier than 2001-06-22 | David Brender | 16h |
| 39 | Resolve Bugs / Update Tests |  | 2d | 2001-06-25 | 2001-06-26 | 33 | 2001-06-22 | 2001-06-25 | 2d | 0d |  | start no earlier than 2001-06-22 | Ken Inafuku | 16h |
| 40 | Resolve Bugs / Update Tests |  | 2d | 2001-06-25 | 2001-06-26 | 36 | 2001-06-22 | 2001-06-25 | 2d | 0d |  | start no earlier than 2001-06-22 | Jim Helm | 16h |
| 41 | Test Pass #5 |  | 5d | 2001-06-27 | 2001-07-03 | 37 | 2001-06-26 | 2001-07-02 | 5d | 0d |  | start no earlier than 2001-06-26 | Tyler Carper | 40h |
| 42 | Test Pass #5 |  | 5d | 2001-06-27 | 2001-07-03 | 38 | 2001-06-26 | 2001-07-02 | 5d | 0d |  | start no earlier than 2001-06-26 | David Brender | 40h |
| 43 | Test Pass #5 |  | 5d | 2001-06-27 | 2001-07-03 | 39 | 2001-06-26 | 2001-07-02 | 5d | 0d |  | start no earlier than 2001-06-26 | Ken Inafuku | 40h |
| 44 | Test Pass #5 |  | 5d | 2001-06-27 | 2001-07-03 | 40 | 2001-06-26 | 2001-07-02 | 5d | 0d |  | start no earlier than 2001-06-26 | Jim Helm | 40h |
| 45 | Resolve Bugs / Update Tests |  | 2d | 2001-07-04 | 2001-07-05 | 41 | 2001-07-03 | 2001-07-04 | 2d | 0d |  | start no earlier than 2001-07-03 | Tyler Carper | 16h |
| 46 | Resolve Bugs / Update Tests |  | 2d | 2001-07-04 | 2001-07-05 | 42 | 2001-07-03 | 2001-07-04 | 2d | 0d |  | start no earlier than 2001-07-03 | David Brender | 16h |
| 47 | Resolve Bugs / Update Tests |  | 2d | 2001-07-04 | 2001-07-05 | 43 | 2001-07-03 | 2001-07-04 | 2d | 0d |  | start no earlier than 2001-07-03 | Ken Inafuku | 16h |
| 48 | Resolve Bugs / Update Tests |  | 2d | 2001-07-04 | 2001-07-05 | 44 | 2001-07-03 | 2001-07-04 | 2d | 0d |  | start no earlier than 2001-07-03 | Jim Helm | 16h |
| 49 | Test Pass #6 |  | 5d | 2001-07-06 | 2001-07-12 | 45 | 2001-07-05 | 2001-07-11 | 5d | 0d |  | start no earlier than 2001-06-26 | Tyler Carper | 40h |
| 50 | Test Pass #6 |  | 5d | 2001-07-06 | 2001-07-12 | 46 | 2001-07-05 | 2001-07-11 | 5d | 0d |  | start no earlier than 2001-06-26 | David Brender | 40h |
| 51 | Test Pass #6 |  | 5d | 2001-07-06 | 2001-07-12 | 47 | 2001-07-05 | 2001-07-11 | 5d | 0d |  | start no earlier than 2001-06-26 | Ken Inafuku | 40h |
| 52 | Test Pass #6 |  | 5d | 2001-07-06 | 2001-07-12 | 48 | 2001-07-05 | 2001-07-11 | 5d | 0d |  | start no earlier than 2001-06-26 | Jim Helm | 40h |
| 53 | Resolve Bugs / Update Tests |  | 2d | 2001-07-13 | 2001-07-16 | 49 | 2001-07-12 | 2001-07-13 | 2d | 0d |  | start no earlier than 2001-07-12 | Tyler Carper | 16h |
| 54 | Resolve Bugs / Update Tests |  | 2d | 2001-07-13 | 2001-07-16 | 50 | 2001-07-12 | 2001-07-13 | 2d | 0d |  | start no earlier than 2001-07-12 | David Brender | 16h |
| 55 | Resolve Bugs / Update Tests |  | 2d | 2001-07-13 | 2001-07-16 | 51 | 2001-07-12 | 2001-07-13 | 2d | 0d |  | start no earlier than 2001-07-12 | Ken Inafuku | 16h |
| 56 | Resolve Bugs / Update Tests |  | 2d | 2001-07-13 | 2001-07-16 | 52 | 2001-07-12 | 2001-07-13 | 2d | 0d |  | start no earlier than 2001-07-12 | Jim Helm | 16h |
| 57 | Test Pass #7 |  | 4d | 2001-07-17 | 2001-07-20 | 53 | 2001-07-16 | 2001-07-20 | 5d | 0d |  | start no earlier than 2001-06-26 | Tyler Carper | 32h |
| 58 | Test Pass #7 |  | 4d | 2001-07-17 | 2001-07-20 | 54 | 2001-07-16 | 2001-07-20 | 5d | 0d |  | start no earlier than 2001-06-26 | David Brender | 32h |
| 59 | Test Pass #7 |  | 4d | 2001-07-17 | 2001-07-20 | 55 | 2001-07-16 | 2001-07-20 | 5d | 0d |  | start no earlier than 2001-06-26 | Ken Inafuku | 32h |
| 60 | Test Pass #7 |  | 4d | 2001-07-17 | 2001-07-20 | 56 | 2001-07-16 | 2001-07-20 | 5d | 0d |  | start no earlier than 2001-06-26 | Jim Helm | 32h |
| 61 | Resolve Bugs / Update Tests |  | 2d | 2001-07-23 | 2001-07-24 | 57 | 2001-07-23 | 2001-07-24 | 2d | 0d |  | start no earlier than 2001-07-23 | Tyler Carper | 16h |
| 62 | Resolve Bugs / Update Tests |  | 2d | 2001-07-23 | 2001-07-24 | 58 | 2001-07-23 | 2001-07-24 | 2d | 0d |  | start no earlier than 2001-07-23 | David Brender | 16h |
| 63 | Resolve Bugs / Update Tests |  | 2d | 2001-07-23 | 2001-07-24 | 59 | 2001-07-23 | 2001-07-24 | 2d | 0d |  | start no earlier than 2001-07-23 | Ken Inafuku | 16h |
| 64 | Resolve Bugs / Update Tests |  | 2d | 2001-07-23 | 2001-07-24 | 60 | 2001-07-23 | 2001-07-24 | 2d | 0d |  | start no earlier than 2001-07-23 | Jim Helm | 16h |
| 65 | Test Pass #8 |  | 4d | 2001-07-25 | 2001-07-30 | 61 | 2001-07-25 | 2001-07-30 | 4d | 0d |  | start no earlier than 2001-06-26 | Tyler Carper | 32h |
| 66 | Test Pass #8 |  | 4d | 2001-07-25 | 2001-07-30 | 62 | 2001-07-25 | 2001-07-30 | 4d | 0d |  | start no earlier than 2001-06-26 | David Brender | 32h |
| 67 | Test Pass #8 |  | 4d | 2001-07-25 | 2001-07-30 | 63 | 2001-07-25 | 2001-07-30 | 4d | 0d |  | start no earlier than 2001-06-26 | Ken Inafuku | 32h |
| 68 | Test Pass #8 |  | 4d | 2001-07-25 | 2001-07-30 | 64 | 2001-07-25 | 2001-07-30 | 4d | 0d |  | start no earlier than 2001-06-26 | Jim Helm | 32h |
| 69 | Resolve Bugs / Targeted Regression |  | 1d | 2001-07-31 | 2001-07-31 | 65 | 2001-07-31 | 2001-07-31 | 1d | 0d |  | start no earlier than 2001-07-31 | Tyler Carper | 8h |
| 70 | Resolve Bugs / Targeted Regression |  | 1d | 2001-07-31 | 2001-07-31 | 66 | 2001-07-31 | 2001-07-31 | 1d | 0d |  | start no earlier than 2001-07-31 | David Brender | 8h |

Notes:
- 5: A/V Pack: Normal / Dash Mode: Normal / TV: Normal (4:3) / Language: English
- 6: A/V Pack: Normal / Dash Mode: Normal / TV: Normal (4:3) / Language: English
- 7: A/V Pack: Normal / Dash Mode: Normal / TV: Normal (4:3) / Language: English
- 15: A/V Pack: Normal / Dash Mode: Letterbox / TV: Normal (4:3) / Language: Japanese
- 16: A/V Pack: Normal / Dash Mode: Letterbox / TV: Normal (4:3) / Language: Japanese
- 17: A/V Pack: Normal / Dash Mode: Letterbox / TV: Normal (4:3) / Language: Japanese
- 24: A/V Pack: Normal / Dash Mode: Widescreen / TV: Normal (4:3) / Language: German
- 25: A/V Pack: Normal / Dash Mode: Widescreen / TV: Normal (4:3) / Language: German
- 26: A/V Pack: Normal / Dash Mode: Widescreen / TV: Normal (4:3) / Language: German
- 32: A/V Pack: NTSC Enhanced (North America) / Dash Mode: Normal / TV: Normal (4:3) / Language: French
- 33: A/V Pack: NTSC Enhanced (North America) / Dash Mode: Normal / TV: Normal (4:3) / Language: French
- 34: A/V Pack: NTSC Enhanced (North America) / Dash Mode: Normal / TV: Normal (4:3) / Language: French
- 41: A/V Pack: NTSC Enhanced (North America) / Dash Mode: Letterbox / TV: Normal (4:3) / Language: Italian
- 42: A/V Pack: NTSC Enhanced (North America) / Dash Mode: Letterbox / TV: Normal (4:3) / Language: Italian
- 43: A/V Pack: NTSC Enhanced (North America) / Dash Mode: Letterbox / TV: Normal (4:3) / Language: Italian
- 44: A/V Pack: NTSC Enhanced (North America) / Dash Mode: Letterbox / TV: Normal (4:3) / Language: Italian
- 49: A/V Pack: NTSC Enhanced (North America) / Dash Mode: Widescreen / TV: Normal (4:3) / Language: Spanish
- 50: A/V Pack: NTSC Enhanced (North America) / Dash Mode: Widescreen / TV: Normal (4:3) / Language: Spanish
- 51: A/V Pack: NTSC Enhanced (North America) / Dash Mode: Widescreen / TV: Normal (4:3) / Language: Spanish
- 52: A/V Pack: NTSC Enhanced (North America) / Dash Mode: Widescreen / TV: Normal (4:3) / Language: Spanish
- 57: A/V Pack: PAL Enhanced / Dash Mode: Normal / TV: Normal (4:3) / Language: English
- 58: A/V Pack: PAL Enhanced / Dash Mode: Normal / TV: Normal (4:3) / Language: English
- 59: A/V Pack: PAL Enhanced / Dash Mode: Normal / TV: Normal (4:3) / Language: English
- 60: A/V Pack: PAL Enhanced / Dash Mode: Normal / TV: Normal (4:3) / Language: English
- 65: A/V Pack: PAL Enhanced / Dash Mode: Widescreen / TV: Normal (4:3) / Language: Japanese
- 66: A/V Pack: PAL Enhanced / Dash Mode: Widescreen / TV: Normal (4:3) / Language: Japanese
- 67: A/V Pack: PAL Enhanced / Dash Mode: Widescreen / TV: Normal (4:3) / Language: Japanese
- 68: A/V Pack: PAL Enhanced / Dash Mode: Widescreen / TV: Normal (4:3) / Language: Japanese

| ID | Task | Type | Duration | Start | Finish | Predecessors | Baseline start | Baseline finish | Baseline duration | Total slack | Constraint | Resources | Work |
| --- | --- | --- | --- | --- | --- | --- | --- | --- | --- | --- | --- | --- | --- |
| 71 | Resolve Bugs / Targeted Regression |  | 1d | 2001-07-31 | 2001-07-31 | 67 | 2001-07-31 | 2001-07-31 | 1d | 0d | start no earlier than 2001-07-31 | Ken Inafuku | 8h |
| 72 | Resolve Bugs / Targeted Regression |  | 1d | 2001-07-31 | 2001-07-31 | 68 | 2001-07-31 | 2001-07-31 | 1d | 0d | start no earlier than 2001-07-31 | Jim Helm | 8h |
| 73 | TEST COMPLETE | milestone | 1d | 2001-07-31 | 2001-07-31 |  | 2001-07-31 | 2001-07-31 | 1d | 0d | start no earlier than 2001-07-31 |  |  |
