# XDIGen

Schedule from MS Project, 2001-06-25 to 2001-07-20, A marks actual dates.
Microsoft

## Calendars

- Standard: Mon-Fri 08:00-12:00, 13:00-17:00; Sat-Sun off.

## Schedule

| ID | WBS | Task | Duration | Start | Finish | Predecessors | Complete | Remaining | Baseline start | Baseline finish | Baseline duration | Total slack | Free slack |
| --- | --- | --- | --- | --- | --- | --- | --- | --- | --- | --- | --- | --- | --- |
| 1 | 1 | **XDI FileGen UI** | 19.5d | 2001-06-25 08:00 A | 2001-07-20 12:00 |  | 51% | 9.61d | 2001-06-25 08:00 | 2001-07-20 12:00 | 19.5d | 0d |  |
| 2 | 1.1 | **Xbox Dev Kit** | 2d | 2001-06-25 08:00 | 2001-06-26 17:00 |  |  |  | 2001-06-25 08:00 | 2001-06-26 17:00 | 2d | 15.66d | 0d |
| 3 | 1.1.1 | Setup Hardware/Software | 1d | 2001-06-25 08:00 | 2001-06-25 17:00 |  |  |  | 2001-06-25 08:00 | 2001-06-25 17:00 | 1d | 15.66d | 0d |
| 4 | 1.1.2 | Learn and Explore XDK | 1d | 2001-06-26 08:00 | 2001-06-26 17:00 | 3 |  |  | 2001-06-26 08:00 | 2001-06-26 17:00 | 1d | 15.66d |  |
| 5 | 1.2 | **XDI Read/Write API** | 3.5d | 2001-06-27 08:00 A | 2001-07-02 12:00 | 2 | 91% | 0.33d | 2001-06-27 08:00 | 2001-07-02 12:00 | 3.5d | 12.49d | 0d |
| 6 | 1.2.1 | Design Read XDI API | 2h | 2001-06-27 08:00 A | 2001-06-27 10:00 |  | 90% | 0.2h | 2001-06-27 08:00 | 2001-06-27 10:00 | 2h | 15.74d |  |
| 7 | 1.2.2 | Implement Common Structures | 2h | 2001-06-27 10:00 A | 2001-06-27 12:00 A | 6 | 100% |  | 2001-06-27 10:00 | 2001-06-27 12:00 | 2h |  |  |
| 8 | 1.2.3 | Implement Write XDI File (VB) | 4h | 2001-06-27 13:00 A | 2001-06-27 17:00 A | 7 | 100% |  | 2001-06-27 13:00 | 2001-06-27 17:00 | 4h |  |  |
| 9 | 1.2.4 | **Xbox Read API** | 2d | 2001-06-28 08:00 A | 2001-06-29 17:00 | 8 | 98% | 0.05d | 2001-06-28 08:00 | 2001-06-29 17:00 | 2d | 12.99d |  |
| 10 | 1.2.4.1 | Implementation | 4h | 2001-06-28 08:00 A | 2001-06-28 12:00 |  | 90% | 0.4h | 2001-06-28 08:00 | 2001-06-28 12:00 | 4h | 14.49d |  |
| 11 | 1.2.4.2 | Xbox Test Harness Code | 1d | 2001-06-28 13:00 A | 2001-06-29 12:00 A | 10 | 100% |  | 2001-06-28 13:00 | 2001-06-29 12:00 | 1d |  |  |
| 12 | 1.2.4.3 | Xbox Debugging | 4h | 2001-06-29 13:00 A | 2001-06-29 17:00 A | 11 | 100% |  | 2001-06-29 13:00 | 2001-06-29 17:00 | 4h |  |  |
| 13 | 1.2.5 | Create VB Read/Write XDI DLL | 2h | 2001-07-02 08:00 A | 2001-07-02 10:00 A | 9 | 100% |  | 2001-07-02 08:00 | 2001-07-02 10:00 | 2h |  |  |
| 14 | 1.2.6 | .LIB for xBox Implementation | 2h | 2001-07-02 10:00 | 2001-07-02 12:00 | 13 |  |  | 2001-07-02 10:00 | 2001-07-02 12:00 | 2h | 12.49d |  |
| 15 | 1.3 | **Visual Basic Ramp-up** | 3.75d | 2001-07-02 13:00 A | 2001-07-06 10:00 | 5 | 60% | 1.51d | 2001-07-02 13:00 | 2001-07-06 10:00 | 3.75d | 10.25d |  |
| 16 | 1.3.1 | Grid Control | 8h | 2001-07-02 13:00 A | 2001-07-03 12:00 |  | 80% | 1.6h | 2001-07-02 13:00 | 2001-07-03 12:00 | 8h | 12.69d | 0d |
| 17 | 1.3.2 | Hooking up Menu Events | 2h | 2001-07-03 13:00 A | 2001-07-03 15:00 | 16 | 75% | 0.5h | 2001-07-03 13:00 | 2001-07-03 15:00 | 2h | 12.5d | 0d |
| 18 | 1.3.3 | Clipboard Operations | 2h | 2001-07-03 15:00 | 2001-07-03 17:00 | 17 |  |  | 2001-07-03 15:00 | 2001-07-03 17:00 | 2h | 12.5d |  |
| 19 | 1.3.4 | Combo Box | 2h | 2001-07-04 08:00 A | 2001-07-04 10:00 A | 18 | 100% |  | 2001-07-04 08:00 | 2001-07-04 10:00 | 2h |  |  |
| 20 | 1.3.5 | Toolbar Control | 4h | 2001-07-04 10:00 | 2001-07-04 15:00 | 19 |  |  | 2001-07-04 10:00 | 2001-07-04 15:00 | 4h | 11.75d |  |
| 21 | 1.3.6 | Common File Dialogs | 4h | 2001-07-04 15:00 A | 2001-07-05 10:00 A | 20 | 100% |  | 2001-07-04 15:00 | 2001-07-05 10:00 | 4h |  |  |
| 22 | 1.3.7 | VB Code and VB Misc | 8h | 2001-07-05 10:00 A | 2001-07-06 10:00 | 21 | 50% | 4h | 2001-07-05 10:00 | 2001-07-06 10:00 | 8h | 10.25d |  |
| 23 | 1.4 | **Initialization/Exit** | 0.75d | 2001-07-06 10:00 A | 2001-07-06 17:00 A | 15 | 100% |  | 2001-07-06 10:00 | 2001-07-06 17:00 | 0.75d |  |  |
| 24 | 1.4.1 | Save Settings | 4h | 2001-07-06 10:00 A | 2001-07-06 15:00 A |  | 100% |  | 2001-07-06 10:00 | 2001-07-06 15:00 | 4h |  |  |
| 25 | 1.4.2 | Read Settings | 2h | 2001-07-06 15:00 A | 2001-07-06 17:00 A | 24 | 100% |  | 2001-07-06 15:00 | 2001-07-06 17:00 | 2h |  |  |

| ID | WBS | Task | Duration | Start | Finish | Predecessors | Complete | Remaining | Baseline start | Baseline finish | Baseline duration | Total slack | Free slack |
| --- | --- | --- | --- | --- | --- | --- | --- | --- | --- | --- | --- | --- | --- |
| 26 | 1.5 | **XDI Grid** | 1.5d | 2001-07-09 08:00 A | 2001-07-10 12:00 | 23 | 50% | 0.75d | 2001-07-09 08:00 | 2001-07-10 12:00 | 1.5d | 2.85d | 0d |
| 27 | 1.5.1 | Initialize Control Properties | 2h | 2001-07-09 08:00 A | 2001-07-09 10:00 A |  | 100% |  | 2001-07-09 08:00 | 2001-07-09 10:00 | 2h |  |  |
| 28 | 1.5.2 | Read MRU XDI File Info | 2h | 2001-07-09 10:00 | 2001-07-09 12:00 | 27 |  |  | 2001-07-09 10:00 | 2001-07-09 12:00 | 2h | 3.85d |  |
| 29 | 1.5.3 | Populate Grid Control | 4h | 2001-07-09 13:00 A | 2001-07-09 17:00 A | 28 | 100% |  | 2001-07-09 13:00 | 2001-07-09 17:00 | 4h |  |  |
| 30 | 1.5.4 | Set UI State (Menu/Toolbar) | 2h | 2001-07-10 08:00 | 2001-07-10 10:00 | 29 |  |  | 2001-07-10 08:00 | 2001-07-10 10:00 | 2h | 2.85d | 0d |
| 31 | 1.5.5 | Click/Keys Handling | 2h | 2001-07-10 10:00 | 2001-07-10 12:00 | 30 |  |  | 2001-07-10 10:00 | 2001-07-10 12:00 | 2h | 2.85d |  |
| 32 | 1.6 | **Demo Entry Add/Modify** | 1.25d | 2001-07-10 13:00 A | 2001-07-11 15:00 | 26 | 96% | 0.05d | 2001-07-10 13:00 | 2001-07-11 15:00 | 1.25d | 1.65d | 0d |
| 33 | 1.6.1 | Initialize Combo Choices | 2h | 2001-07-10 13:00 A | 2001-07-10 15:00 A |  | 100% |  | 2001-07-10 13:00 | 2001-07-10 15:00 | 2h |  |  |
| 34 | 1.6.2 | Initialize Field Contents | 2h | 2001-07-10 15:00 A | 2001-07-10 17:00 A | 33 | 100% |  | 2001-07-10 15:00 | 2001-07-10 17:00 | 2h |  |  |
| 35 | 1.6.3 | Initialize Combo Choices | 2h | 2001-07-11 08:00 A | 2001-07-11 10:00 A | 34 | 100% |  | 2001-07-11 08:00 | 2001-07-11 10:00 | 2h |  |  |
| 36 | 1.6.4 | Save | 2h | 2001-07-11 10:00 A | 2001-07-11 12:00 | 35 | 80% | 0.4h | 2001-07-11 10:00 | 2001-07-11 12:00 | 2h | 1.9d |  |
| 37 | 1.6.5 | Close | 2h | 2001-07-11 13:00 A | 2001-07-11 15:00 A | 36 | 100% |  | 2001-07-11 13:00 | 2001-07-11 15:00 | 2h |  |  |
| 38 | 1.7 | **Menus** | 3.75d | 2001-07-11 15:00 A | 2001-07-17 12:00 | 32 | 47% | 1.98d | 2001-07-11 15:00 | 2001-07-17 12:00 | 3.75d | 0d |  |
| 39 | 1.7.1 | **File** | 1.75d | 2001-07-11 15:00 A | 2001-07-13 12:00 |  | 87% | 0.23d | 2001-07-11 15:00 | 2001-07-13 12:00 | 1.75d | 0.12d | 0d |
| 40 | 1.7.1.1 | New | 2h | 2001-07-11 15:00 A | 2001-07-11 17:00 |  | 50% | 1h | 2001-07-11 15:00 | 2001-07-11 17:00 | 2h | 1.52d | 0d |
| 41 | 1.7.1.2 | Open | 4h | 2001-07-12 08:00 A | 2001-07-12 12:00 | 40 | 80% | 0.8h | 2001-07-12 08:00 | 2001-07-12 12:00 | 4h | 1.12d |  |
| 42 | 1.7.1.3 | Close | 2h | 2001-07-12 13:00 A | 2001-07-12 15:00 A | 41 | 100% |  | 2001-07-12 13:00 | 2001-07-12 15:00 | 2h |  |  |
| 43 | 1.7.1.4 | Save/Save As | 4h | 2001-07-12 15:00 A | 2001-07-13 10:00 A | 42 | 100% |  | 2001-07-12 15:00 | 2001-07-13 10:00 | 4h |  |  |
| 44 | 1.7.1.5 | Exit | 2h | 2001-07-13 10:00 A | 2001-07-13 12:00 A | 43 | 100% |  | 2001-07-13 10:00 | 2001-07-13 12:00 | 2h |  |  |
| 45 | 1.7.2 | **Edit** | 1d | 2001-07-13 13:00 | 2001-07-16 12:00 | 39 |  |  | 2001-07-13 13:00 | 2001-07-16 12:00 | 1d | 0.12d | 0d |
| 46 | 1.7.2.1 | Copy | 2h | 2001-07-13 13:00 | 2001-07-13 15:00 |  |  |  | 2001-07-13 13:00 | 2001-07-13 15:00 | 2h | 0.12d | 0d |
| 47 | 1.7.2.2 | Paste | 2h | 2001-07-13 15:00 | 2001-07-13 17:00 | 46 |  |  | 2001-07-13 15:00 | 2001-07-13 17:00 | 2h | 0.12d | 0d |
| 48 | 1.7.2.3 | Cut | 2h | 2001-07-16 08:00 | 2001-07-16 10:00 | 47 |  |  | 2001-07-16 08:00 | 2001-07-16 10:00 | 2h | 0.12d | 0d |
| 49 | 1.7.2.4 | Available State | 2h | 2001-07-16 10:00 | 2001-07-16 12:00 | 48 |  |  | 2001-07-16 10:00 | 2001-07-16 12:00 | 2h | 0.12d |  |

| ID | WBS | Task | Duration | Start | Finish | Predecessors | Complete | Remaining | Baseline start | Baseline finish | Baseline duration | Total slack | Free slack |
| --- | --- | --- | --- | --- | --- | --- | --- | --- | --- | --- | --- | --- | --- |
| 50 | 1.7.3 | **View** | 0.5d | 2001-07-16 13:00 A | 2001-07-16 17:00 | 45 | 50% | 0.25d | 2001-07-16 13:00 | 2001-07-16 17:00 | 0.5d | 0d |  |
| 51 | 1.7.3.1 | Toggle Toolbar | 2h | 2001-07-16 13:00 A | 2001-07-16 15:00 |  | 50% | 1h | 2001-07-16 13:00 | 2001-07-16 15:00 | 2h | 0.12d | 0d |
| 52 | 1.7.3.2 | Toggle Status | 2h | 2001-07-16 15:00 A | 2001-07-16 17:00 | 51 | 50% | 1h | 2001-07-16 15:00 | 2001-07-16 17:00 | 2h | 0d |  |
| 53 | 1.7.4 | **Help** | 0.5d | 2001-07-17 08:00 | 2001-07-17 12:00 | 50 |  |  | 2001-07-17 08:00 | 2001-07-17 12:00 | 0.5d | 0d |  |
| 54 | 1.7.4.1 | About Dialog | 4h | 2001-07-17 08:00 | 2001-07-17 12:00 |  |  |  | 2001-07-17 08:00 | 2001-07-17 12:00 | 4h | 0d |  |
| 55 | 1.8 | **Toolbar** | 0.75d | 2001-07-17 13:00 | 2001-07-18 10:00 | 38 |  |  | 2001-07-17 13:00 | 2001-07-18 10:00 | 0.75d | 0d |  |
| 56 | 1.8.1 | Image List | 2h | 2001-07-17 13:00 | 2001-07-17 15:00 |  |  |  | 2001-07-17 13:00 | 2001-07-17 15:00 | 2h | 0d |  |
| 57 | 1.8.2 | Call Existing Code As Appropriate | 2h | 2001-07-17 15:00 | 2001-07-17 17:00 | 56 |  |  | 2001-07-17 15:00 | 2001-07-17 17:00 | 2h | 0d |  |
| 58 | 1.8.3 | Available State | 2h | 2001-07-18 08:00 | 2001-07-18 10:00 | 57 |  |  | 2001-07-18 08:00 | 2001-07-18 10:00 | 2h | 0d |  |
| 59 | 1.9 | **Status Bar** | 0.25d | 2001-07-18 10:00 | 2001-07-18 12:00 | 55 |  |  | 2001-07-18 10:00 | 2001-07-18 12:00 | 0.25d | 0d |  |
| 60 | 1.9.1 | Add Required Info ??? | 2h | 2001-07-18 10:00 | 2001-07-18 12:00 |  |  |  | 2001-07-18 10:00 | 2001-07-18 12:00 | 2h | 0d |  |
| 61 | 1.10 | **Testing UI** | 2d | 2001-07-18 13:00 | 2001-07-20 12:00 | 59 |  |  | 2001-07-18 13:00 | 2001-07-20 12:00 | 2d | 0d |  |
| 62 | 1.10.1 | Ad Hoc UI Testing | 4h | 2001-07-18 13:00 | 2001-07-18 17:00 |  |  |  | 2001-07-18 13:00 | 2001-07-18 17:00 | 4h | 0d |  |
| 63 | 1.10.2 | Unit Testing API | 1.5d | 2001-07-19 08:00 | 2001-07-20 12:00 | 62 |  |  | 2001-07-19 08:00 | 2001-07-20 12:00 | 1.5d | 0d |  |
| 65 | 2 | **Features Not Scheduled/Planned** | 1d? | 2001-06-25 08:00 | 2001-06-25 17:00 |  |  |  | 2001-06-25 08:00 | 2001-06-25 17:00 | 1d? | 18.5d |  |
| 66 | 2.1 | Edit Multiple XDI's simultaneously | 1d? | 2001-06-25 08:00 | 2001-06-25 17:00 |  |  |  | 2001-06-25 08:00 | 2001-06-25 17:00 | 1d? | 18.5d |  |
| 67 | 2.2 | Window Menu Option | 1d? | 2001-06-25 08:00 | 2001-06-25 17:00 |  |  |  | 2001-06-25 08:00 | 2001-06-25 17:00 | 1d? | 18.5d |  |
| 68 | 2.3 | Help | 1d? | 2001-06-25 08:00 | 2001-06-25 17:00 |  |  |  | 2001-06-25 08:00 | 2001-06-25 17:00 | 1d? | 18.5d |  |
| 69 | 2.4 | Pathname Validation | 1d? | 2001-06-25 08:00 | 2001-06-25 17:00 |  |  |  | 2001-06-25 08:00 | 2001-06-25 17:00 | 1d? | 18.5d |  |
| 70 | 2.5 | File Menu Pick List | 1d? | 2001-06-25 08:00 | 2001-06-25 17:00 |  |  |  | 2001-06-25 08:00 | 2001-06-25 17:00 | 1d? | 18.5d |  |
